# GORA PADAO FACTORY

Schedule from MS Project, 2024-01-15 to 2026-07-07, costs in €.

## Calendars

- Standard: Mon-Fri 08:00-12:00, 13:00-17:00; Sat-Sun off.

## Resources

| Resource | Rate |
| --- | --- |
| Team of Italian workers (4 workers each) | 320 |
| Team of Indian workers (4 workers each) | 65 |
| Italian Project Engineer | 140 |
| Italian Specialized Engineer | 120 |
| Indian Project Engineer | 70 |
| Indian Specialized Engineer | 60 |
| Purchasing agent | 70 |
| Crashing Team Indian workers | 130 |
| Owner |  |
| Transportation Company |  |
| Supplier |  |
| Crashing Team Italian workers | 640 |
| CEO IT | 144 |
| Functional Manager IT | 57 |
| Functional Professional IT | 44 |
| CEO IN | 48 |
| Functional Manager IN | 11 |
| Functional Professional IN | 7.5 |
| Human Resources IN | 7.5 |
| Information Technology IN | 7.5 |
| Project Director | 58 |
| ERP Expert IT | 43 |
| Business Analyst IT | 38 |
| ERP Professional IN | 7.5 |
| Sponsor | 55 |
| Senior guiding team | 277.5 |
| Field guiding team | 388.5 |
| Change team | 355.2 |
| Business analyst | 140.97 |
| Crashing italian project engineering | 280 |
| Crashing italian specialized engineering | 240 |
| Crashing indian project engineering | 140 |
| Crashing indian specialized engineering | 120 |

## Schedule

| ID | WBS | Task | Duration | Start | Finish | Predecessors | Total slack | Free slack | Resources | Work | Cost |
| --- | --- | --- | --- | --- | --- | --- | --- | --- | --- | --- | --- |
| 1 | 1 | **Project** | 646.45d | 2024-01-15 | 2026-07-07 |  | 0d |  |  | 51132.1h | 25,153,237.88 |
| 2 | 1.1 | **Project 1** | 546.95d | 2024-01-15 | 2026-02-17 |  | 0d |  |  | 43644.1h | 24,606,267.6 |
| 3 | 1.1.1 | **ENGINEERING PHASE** | 124.8d | 2024-01-15 | 2024-07-05 |  | 0d |  |  | 9600h | 1,342,464 |
| 4 | 1.1.1.1 | Detailed Engineering - Process | 124.8d | 2024-01-15 | 2024-07-05 |  | 2.9d | 0d | Italian Project Engineer [200%]; Italian Specialized Engineer; Crashing italian project engineering; Crashing italian specialized engineering | 4992h | 918,528 |
| 5 | 1.1.1.2 | Detailed Engineering - Layout | 115.2d | 2024-01-15 | 2024-06-24 |  | 0d |  | Indian Project Engineer [200%]; Indian Specialized Engineer [400%]; Crashing indian specialized engineering; Crashing indian project engineering | 4608h | 423,936 |
| 6 | 1.1.2 | **CIVIL WORKS REFURBISHMENT ERECTION PHASE** | 173.5d | 2024-07-05 | 2025-03-06 |  | 2.9d |  |  | 1916h | 840 |
| 7 | 1.1.2.1 | Design Civil Works | 55d | 2024-07-05 | 2024-09-20 | 5, 4 | 2.9d | 0d | Owner | 440h |  |
| 8 | 1.1.2.2 | Permits and Authorizations | 30d | 2024-08-16 | 2024-09-27 | 7FS-25d | 2.9d | 0d | Owner | 240h |  |
| 9 | 1.1.2.3 | Site Installation | 15d | 2024-09-06 | 2024-09-27 | 8FS-15d | 2.9d | 0d | Owner | 120h |  |
| 10 | 1.1.2.4 | Excavations & Foundations | 30d | 2024-09-27 | 2024-11-08 | 9 | 2.9d | 0d | Owner | 240h |  |
| 11 | 1.1.2.5 | Structural Improvement | 35d | 2024-10-18 | 2024-12-06 | 10FS-15d | 2.9d | 0d | Owner | 280h |  |
| 12 | 1.1.2.6 | Industrial Flooring | 35d | 2024-12-06 | 2025-01-24 | 11 | 2.9d | 0d | Owner | 280h |  |
| 13 | 1.1.2.7 | Finishes | 38d | 2025-01-10 | 2025-03-05 | 12FS-10d | 347.15d | 0d | Owner | 304h |  |
| 14 | 1.1.2.8 | Civil work final meeting | 4h | 2025-03-05 | 2025-03-06 | 13 | 347.15d |  | Owner; Indian Project Engineer; Italian Project Engineer | 12h | 840 |
| 15 | 1.1.3 | **PURCHASE PROCESS (to repeat for each equipment type)** | 14.88d | 2024-06-24 | 2024-07-15 |  | 0d |  |  | 84.08h | 5,885.6 |
| 16 | 1.1.3.1 | Request for proposals | 2.5d | 2024-06-24 | 2024-06-26 | 5 | 0d |  | Purchasing agent [200%] | 40h | 2,800 |
| 17 | 1.1.3.2 | Waiting period | 10d | 2024-06-26 | 2024-07-10 | 16 | 0d |  | Supplier [0.1%] |  |  |
| 18 | 1.1.3.3 | Competitive proposal analysis | 2d | 2024-07-10 | 2024-07-12 | 17 | 0d |  | Purchasing agent [200%] | 32h | 2,240 |
| 19 | 1.1.3.4 | **Orders** | 0.38d | 2024-07-12 | 2024-07-15 |  | 0d |  | Purchasing agent | 12.08h | 845.6 |
| 20 | 1.1.3.4.1 | CNC Machine (Double and Single spindle) order | 0.13d | 2024-07-12 | 2024-07-12 | 18 | 0.99d | 0d | Purchasing agent | 1.04h | 72.8 |
| 21 | 1.1.3.4.2 | Drilling Machine order | 0.12d | 2024-07-12 | 2024-07-12 | 18 | 0d |  | Purchasing agent | 1h | 70 |
| 22 | 1.1.3.4.3 | Conveyors order (Powered and Overhead) | 0.12d | 2024-07-12 | 2024-07-12 | 18 | 84.38d | 0d | Purchasing agent | 1h | 70 |
| 23 | 1.1.3.4.4 | Washing station (Final and Intermidiate) order | 0.12d | 2024-07-12 | 2024-07-12 | 18 | 11d | 0d | Purchasing agent | 1h | 70 |
| 24 | 1.1.3.4.5 | Assembly Station order | 0.12d | 2024-07-12 | 2024-07-12 | 20 | 10.87d | 0d | Purchasing agent | 1h | 70 |
| 25 | 1.1.3.4.6 | Gantry Loader order | 0.12d | 2024-07-12 | 2024-07-12 | 21 | 119.38d | 0d | Purchasing agent | 1h | 70 |
| 26 | 1.1.3.4.7 | Rotating Table | 0.12d | 2024-07-12 | 2024-07-12 | 22 | 84.38d | 0d | Purchasing agent | 1h | 70 |
| 27 | 1.1.3.4.8 | Lift/Lower Components | 0.12d | 2024-07-12 | 2024-07-12 | 23 | 84.38d | 0d | Purchasing agent | 1h | 70 |
| 28 | 1.1.3.4.9 | Manipulator | 0.12d | 2024-07-12 | 2024-07-15 | 24 | 84.25d | 0d | Purchasing agent | 1h | 70 |

| ID | WBS | Task | Duration | Start | Finish | Predecessors | Total slack | Free slack | Resources | Work | Cost |
| --- | --- | --- | --- | --- | --- | --- | --- | --- | --- | --- | --- |
| 29 | 1.1.4 | **EQUIPMENT MANUFACTURING PHASE (values for each unit of equipment)** | 132.38d | 2024-07-12 | 2025-01-15 |  | 0d |  |  | 44h | 18,680,878 |
| 30 | 1.1.4.1 | **Single Spindle machine** | 111.12d | 2024-07-12 | 2024-12-16 |  | 0.99d |  |  | 1h | 1,020,070 |
| 31 | 1.1.4.1.1 | Single Spindle Machine | 110d | 2024-07-12 | 2024-12-13 | 20 | 0.99d | 0d | Supplier [0.1%] |  | 1,020,000 |
| 32 | 1.1.4.1.2 | Technical requiremets check | 1d | 2024-12-13 | 2024-12-16 | 31 | 0.99d | 0d | Supplier [0.1%] |  |  |
| 33 | 1.1.4.1.3 | Payment | 1h | 2024-12-16 | 2024-12-16 | 32 | 0.99d | 0d | Purchasing agent | 1h | 70 |
| 34 | 1.1.4.2 | **Double Spindle Machine** | 111.12d | 2024-07-12 | 2024-12-16 |  | 45.99d |  |  | 1h | 11,000,070 |
| 35 | 1.1.4.2.1 | Double Spindle machine | 110d | 2024-07-12 | 2024-12-13 | 20 | 45.99d | 0d | Supplier [0.1%] |  | 11,000,000 |
| 36 | 1.1.4.2.2 | Technical requiremets check | 1d | 2024-12-13 | 2024-12-16 | 35 | 45.99d | 0d | Supplier [0.1%] |  |  |
| 37 | 1.1.4.2.3 | Payment | 1h | 2024-12-16 | 2024-12-16 | 36 | 45.99d | 0d | Purchasing agent | 1h | 70 |
| 38 | 1.1.4.3 | **Drilling machine** | 67.12d | 2024-07-12 | 2024-10-15 |  | 0d |  |  | 1h | 270,070 |
| 39 | 1.1.4.3.1 | Drilling machine | 66d | 2024-07-12 | 2024-10-14 | 21 | 0d |  | Supplier [0.1%] |  | 270,000 |
| 40 | 1.1.4.3.2 | Technical requiremets check | 1d | 2024-10-14 | 2024-10-15 | 39 | 0d |  | Supplier [0.1%] |  |  |
| 41 | 1.1.4.3.3 | Payment | 1h | 2024-10-15 | 2024-10-15 | 40 | 0d |  | Purchasing agent | 1h | 70 |
| 42 | 1.1.4.4 | **Powered Conveyors** | 131.12d | 2024-07-12 | 2025-01-13 |  | 84.5d |  |  | 1h | 250,070 |
| 43 | 1.1.4.4.1 | Powered conveyors | 130d | 2024-07-12 | 2025-01-10 | 22 | 84.5d | 0d | Supplier [0.1%] |  | 250,000 |
| 44 | 1.1.4.4.2 | Technical requiremets check | 1d | 2025-01-10 | 2025-01-13 | 43 | 84.5d | 0d | Supplier [0.1%] |  |  |
| 45 | 1.1.4.4.3 | Payment | 1h | 2025-01-13 | 2025-01-13 | 44 | 84.5d | 0d | Purchasing agent | 1h | 70 |
| 46 | 1.1.4.5 | **Overhead Conveyors** | 131.12d | 2024-07-12 | 2025-01-13 |  | 84.5d |  |  | 1h | 70,270 |
| 47 | 1.1.4.5.1 | Overhead Conveyors | 130d | 2024-07-12 | 2025-01-10 | 22 | 84.5d | 0d | Supplier [0.1%] |  | 70,200 |
| 48 | 1.1.4.5.2 | Technical requiremets check | 1d | 2025-01-10 | 2025-01-13 | 47 | 84.5d | 0d | Supplier [0.1%] |  |  |
| 49 | 1.1.4.5.3 | Payment | 1h | 2025-01-13 | 2025-01-13 | 48 | 84.5d | 0d | Purchasing agent | 1h | 70 |
| 50 | 1.1.4.6 | **Intermidiate Washing stations** | 71.12d | 2024-07-12 | 2024-10-21 |  | 11d |  |  | 1h | 530,070 |
| 51 | 1.1.4.6.1 | Intermidiate Washing stations | 70d | 2024-07-12 | 2024-10-18 | 23 | 11d | 0d | Supplier [0.1%] |  | 530,000 |
| 52 | 1.1.4.6.2 | Technical requiremets check | 1d | 2024-10-18 | 2024-10-21 | 51 | 11d | 0d | Supplier [0.1%] |  |  |
| 53 | 1.1.4.6.3 | Payment | 1h | 2024-10-21 | 2024-10-21 | 52 | 11d | 6.35d | Purchasing agent | 1h | 70 |

| ID | WBS | Task | Duration | Start | Finish | Predecessors | Total slack | Free slack | Resources | Work | Cost |
| --- | --- | --- | --- | --- | --- | --- | --- | --- | --- | --- | --- |
| 54 | 1.1.4.7 | **Final Washing station** | 71.12d | 2024-07-12 | 2024-10-21 |  | 144.5d |  |  | 1h | 970,070 |
| 55 | 1.1.4.7.1 | Final Washing station | 70d | 2024-07-12 | 2024-10-18 | 23 | 144.5d | 0d | Supplier [0.1%] |  | 970,000 |
| 56 | 1.1.4.7.2 | Technical requiremets check | 1d | 2024-10-18 | 2024-10-21 | 55 | 144.5d | 0d | Supplier [0.1%] |  |  |
| 57 | 1.1.4.7.3 | Payment | 1h | 2024-10-21 | 2024-10-21 | 56 | 144.5d | 6.35d | Purchasing agent | 1h | 70 |
| 58 | 1.1.4.8 | **Assembly station** | 101.12d | 2024-07-12 | 2024-12-03 |  | 10.87d |  |  | 1h | 2,200,070 |
| 59 | 1.1.4.8.1 | Assembly station | 100d | 2024-07-12 | 2024-11-29 | 24 | 10.87d | 0d | Supplier [0.1%] |  | 2,200,000 |
| 60 | 1.1.4.8.2 | Technical requiremets check | 1d | 2024-11-29 | 2024-12-02 | 59 | 10.87d | 0d | Supplier [0.1%] |  |  |
| 61 | 1.1.4.8.3 | Payment | 1h | 2024-12-02 | 2024-12-03 | 60 | 10.87d | 6.22d | Purchasing agent | 1h | 70 |
| 62 | 1.1.4.9 | **Gantry loaders** | 96.12d | 2024-07-12 | 2024-11-26 |  | 119.38d |  |  | 1h | 2,200,070 |
| 63 | 1.1.4.9.1 | Gantry loaders | 95d | 2024-07-12 | 2024-11-22 | 25 | 119.38d | 0d | Supplier [0.1%] |  | 2,200,000 |
| 64 | 1.1.4.9.2 | Technical requiremets check | 1d | 2024-11-22 | 2024-11-25 | 63 | 119.38d | 0d | Supplier [0.1%] |  |  |
| 65 | 1.1.4.9.3 | Payment | 1h | 2024-11-25 | 2024-11-26 | 64 | 119.38d | 0d | Purchasing agent | 1h | 70 |
| 66 | 1.1.4.10 | **Rotating Table** | 131.12d | 2024-07-12 | 2025-01-14 |  | 84.38d |  |  | 1h | 112,070 |
| 67 | 1.1.4.10.1 | Rotating Table | 130d | 2024-07-12 | 2025-01-10 | 26 | 84.38d | 0d | Supplier [0.1%] |  | 112,000 |
| 68 | 1.1.4.10.2 | Technical requiremets check | 1d | 2025-01-10 | 2025-01-13 | 67 | 84.38d | 0d | Supplier [0.1%] |  |  |
| 69 | 1.1.4.10.3 | Payment | 1h | 2025-01-13 | 2025-01-14 | 68 | 84.38d | 0d | Purchasing agent | 1h | 70 |
| 70 | 1.1.4.11 | **Lift/Lower Components** | 131.12d | 2024-07-12 | 2025-01-14 |  | 84.38d |  |  | 1h | 32,470 |
| 71 | 1.1.4.11.1 | Lift/Lower Components | 130d | 2024-07-12 | 2025-01-10 | 27 | 84.38d | 0d | Supplier [0.1%] |  | 32,400 |
| 72 | 1.1.4.11.2 | Technical requiremets check | 1d | 2025-01-10 | 2025-01-13 | 71 | 84.38d | 0d | Supplier [0.1%] |  |  |
| 73 | 1.1.4.11.3 | Payment | 1h | 2025-01-13 | 2025-01-14 | 72 | 84.38d | 0d | Purchasing agent | 1h | 70 |
| 74 | 1.1.4.12 | **Manipulator** | 131.12d | 2024-07-15 | 2025-01-14 |  | 84.25d |  |  | 1h | 22,070 |
| 75 | 1.1.4.12.1 | Manipulator | 130d | 2024-07-15 | 2025-01-13 | 28 | 84.25d | 0d | Supplier [0.1%] |  | 22,000 |
| 76 | 1.1.4.12.2 | Technical requiremets check | 1d | 2025-01-13 | 2025-01-14 | 75 | 84.25d | 0d | Supplier [0.1%] |  |  |
| 77 | 1.1.4.12.3 | Payment | 1h | 2025-01-14 | 2025-01-14 | 76 | 84.25d | 0d | Purchasing agent | 1h | 70 |

| ID | WBS | Task | Duration | Start | Finish | Predecessors | Total slack | Free slack | Resources | Work | Cost |
| --- | --- | --- | --- | --- | --- | --- | --- | --- | --- | --- | --- |
| 78 | 1.1.4.13 | **Meeting to start project 2 & 3** | 1d | 2025-01-14 | 2025-01-15 |  | 84.25d |  |  | 32h | 3,438 |
| 79 | 1.1.4.13.1 | Meeting to start project 2 | 4h | 2025-01-14 | 2025-01-14 | 33, 37, 41, 45, 49, 53, 57, 61, 65, 69, 73, 77 | 84.25d | 0d | CEO IN; CEO IT; Purchasing agent; Project Director | 16h | 1,280 |
| 80 | 1.1.4.13.2 | Meeting to start project 3 | 4h | 2025-01-14 | 2025-01-15 | 33, 37, 41, 45, 49, 53, 57, 61, 65, 69, 73, 77, 79 | 293.25d | 0d | CEO IN; CEO IT; Purchasing agent; Senior guiding team | 16h | 2,158 |
| 81 | 1.1.5 | **TRANSPORTATION PHASE (from the contractor to the owner's construction site)** | 124.25d | 2024-10-15 | 2025-04-08 |  | 0d |  |  |  | 143,000 |
| 82 | 1.1.5.1 | Single Spindle Machine | 60d | 2024-12-16 | 2025-03-10 | 12FF-5%, 33 | 0.99d | 0d | Transportation Company [0.1%] |  | 10,000 |
| 83 | 1.1.5.2 | Double Spindle Machine | 60d | 2024-12-16 | 2025-03-10 | 12FF-5%, 37 | 45.99d | 41.34d | Transportation Company [0.1%] |  | 55,000 |
| 84 | 1.1.5.3 | Drilling Machine | 60d | 2024-10-15 | 2025-01-07 | 12FF-4.5%, 41 | 0d |  | Transportation Company [0.1%] |  | 5,000 |
| 85 | 1.1.5.4 | Powered Conveyors | 15d | 2025-01-13 | 2025-02-03 | 12FF-4.5%, 45 | 251d |  | Transportation Company [0.1%] |  | 7,500 |
| 86 | 1.1.5.5 | Overhead Conveyors | 15d | 2025-01-13 | 2025-02-03 | 12FF-4.7%, 49 | 251d |  | Transportation Company [0.1%] |  | 1,500 |
| 87 | 1.1.5.6 | Manipulator | 60d | 2025-01-14 | 2025-04-08 | 12FF-5%, 77 | 205.75d |  | Transportation Company [0.1%] |  | 5,000 |
| 88 | 1.1.5.7 | Gantry Loader | 60d | 2024-11-26 | 2025-02-18 | 12FF-4.7%, 65 | 240.88d |  | Transportation Company [0.1%] |  | 35,000 |
| 89 | 1.1.5.8 | Rotating table | 45d | 2025-01-14 | 2025-03-18 | 12FF-5%, 69 | 220.88d |  | Transportation Company [0.1%] |  | 3,500 |
| 90 | 1.1.5.9 | Lift/Lower Components | 60d | 2025-01-14 | 2025-04-08 | 12FF-5%, 73 | 205.88d |  | Transportation Company [0.1%] |  | 5,000 |
| 91 | 1.1.5.10 | Intermidiate washing station | 45d | 2024-10-30 | 2025-01-01 | 12FF-5%, 53 | 4.65d | 0d | Transportation Company [0.1%] |  | 7,000 |
| 92 | 1.1.5.11 | Final washing station | 45d | 2024-10-30 | 2025-01-01 | 12FF-5%, 57 | 229.65d | 228.66d | Transportation Company [0.1%] |  | 7,000 |
| 93 | 1.1.5.12 | Assembly station | 15d | 2024-12-11 | 2025-01-01 | 12FF-5%, 61 | 4.65d | 0d | Transportation Company [0.1%] |  | 1,500 |
| 94 | 1.1.6 | **ON SITE ERECTION PHASE** | 274.65d | 2025-01-01 | 2026-01-20 |  | 0d |  |  | 31680h | 4,359,600 |
| 95 | 1.1.6.1 | **OP.10** | 90d | 2025-03-10 | 2025-07-14 |  | 0.99d |  |  | 2880h | 370,800 |
| 96 | 1.1.6.1.1 | **Single-spindle cnc machine 1** | 45d | 2025-03-10 | 2025-05-12 |  | 0.99d |  |  | 1440h | 185,400 |
| 97 | 1.1.6.1.1.1 | Installation | 45d | 2025-03-10 | 2025-05-12 | 147, 82 | 0.99d | 0d | Team of Indian workers (4 workers each) [300%] | 1080h | 70,200 |
| 98 | 1.1.6.1.1.2 | Electrical&IT Connections | 5d | 2025-03-10 | 2025-03-17 | 97SS, 149 | 136d | 0d | Team of Italian workers (4 workers each) [300%] | 120h | 38,400 |
| 99 | 1.1.6.1.1.3 | Final Assembly | 10d | 2025-03-17 | 2025-03-31 | 98 | 136d | 30d | Team of Italian workers (4 workers each) [300%] | 240h | 76,800 |
| 100 | 1.1.6.1.2 | **Single-spindle cnc machine 2** | 45d | 2025-05-12 | 2025-07-14 |  | 0.99d |  |  | 1440h | 185,400 |
| 101 | 1.1.6.1.2.1 | Installation | 45d | 2025-05-12 | 2025-07-14 | 97, 82 | 0.99d | 0d | Team of Indian workers (4 workers each) [300%] | 1080h | 70,200 |
| 102 | 1.1.6.1.2.2 | Electrical&IT Connections | 5d | 2025-05-12 | 2025-05-19 | 101SS, 99 | 106d | 0d | Team of Italian workers (4 workers each) [300%] | 120h | 38,400 |
| 103 | 1.1.6.1.2.3 | Final Assembly | 10d | 2025-05-19 | 2025-06-02 | 102 | 106d | 30d | Team of Italian workers (4 workers each) [300%] | 240h | 76,800 |

| ID | WBS | Task | Duration | Start | Finish | Predecessors | Total slack | Free slack | Constraint | Resources | Work | Cost |
| --- | --- | --- | --- | --- | --- | --- | --- | --- | --- | --- | --- | --- |
| 104 | 1.1.6.2 | **OP.20** | 90d | 2025-01-07 | 2025-05-13 |  | 0d |  |  |  | 2880h | 370,800 |
| 105 | 1.1.6.2.1 | **Drilling machine** | 90d | 2025-01-07 | 2025-05-13 |  | 0d |  |  |  | 2880h | 370,800 |
| 106 | 1.1.6.2.1.1 | Installation | 90d | 2025-01-07 | 2025-05-13 | 84 | 0d |  |  | Team of Indian workers (4 workers each) [300%] | 2160h | 140,400 |
| 107 | 1.1.6.2.1.2 | Electrical&IT Connections | 10d | 2025-01-07 | 2025-01-21 | 106SS | 150d | 0d |  | Team of Italian workers (4 workers each) [300%] | 240h | 76,800 |
| 108 | 1.1.6.2.1.3 | Final Assembly | 20d | 2025-01-21 | 2025-02-18 | 107 | 150d | 60d |  | Team of Italian workers (4 workers each) [300%] | 480h | 153,600 |
| 109 | 1.1.6.3 | **OP.30** | 45d | 2025-05-13 | 2025-07-15 |  | 0d |  |  |  | 2880h | 441,000 |
| 110 | 1.1.6.3.1 | **Double-spindle CNC machine 1** | 22.5d | 2025-05-13 | 2025-06-13 |  | 0d |  |  |  | 1440h | 220,500 |
| 111 | 1.1.6.3.1.1 | Installation | 22.5d | 2025-05-13 | 2025-06-13 | 106, 83 | 0d |  |  | Crashing Team Indian workers [300%]; Team of Indian workers (4 workers each) [300%] | 1080h | 105,300 |
| 112 | 1.1.6.3.1.2 | Electrical&IT Connections | 5d | 2025-05-13 | 2025-05-20 | 111SS, 108 | 90d | 0d |  | Team of Italian workers (4 workers each) [300%] | 120h | 38,400 |
| 113 | 1.1.6.3.1.3 | Final Assembly | 10d | 2025-05-20 | 2025-06-03 | 112 | 90d | 7.5d |  | Team of Italian workers (4 workers each) [300%] | 240h | 76,800 |
| 114 | 1.1.6.3.2 | **Double-spindle CNC machine 2** | 22.5d | 2025-06-13 | 2025-07-15 |  | 0d |  |  |  | 1440h | 220,500 |
| 115 | 1.1.6.3.2.1 | Installation | 22.5d | 2025-06-13 | 2025-07-15 | 111, 83 | 0d |  |  | Crashing Team Indian workers [300%]; Team of Indian workers (4 workers each) [300%] | 1080h | 105,300 |
| 116 | 1.1.6.3.2.2 | Electrical&IT Connections | 5d | 2025-06-13 | 2025-06-20 | 115SS, 113 | 82.5d | 0d |  | Team of Italian workers (4 workers each) [300%] | 120h | 38,400 |
| 117 | 1.1.6.3.2.3 | Final Assembly | 10d | 2025-06-20 | 2025-07-04 | 116 | 82.5d | 7.5d |  | Team of Italian workers (4 workers each) [300%] | 240h | 76,800 |
| 118 | 1.1.6.4 | **OP.40** | 90d | 2025-05-07 | 2025-09-10 |  | 4.65d |  |  |  | 2880h | 370,800 |
| 119 | 1.1.6.4.1 | **Double-spindle CNC machine 3** | 45d | 2025-05-07 | 2025-07-09 |  | 4.65d |  |  |  | 1440h | 185,400 |
| 120 | 1.1.6.4.1.1 | Installation | 45d | 2025-05-07 | 2025-07-09 | 142, 83 | 4.65d | 0d |  | Team of Indian workers (4 workers each) [300%] | 1080h | 70,200 |
| 121 | 1.1.6.4.1.2 | Electrical&IT Connections | 5d | 2025-05-07 | 2025-05-14 | 120SS, 144 | 124.65d | 0d |  | Team of Italian workers (4 workers each) [300%] | 120h | 38,400 |
| 122 | 1.1.6.4.1.3 | Final Assembly | 10d | 2025-05-14 | 2025-05-28 | 121 | 124.65d | 30d |  | Team of Italian workers (4 workers each) [300%] | 240h | 76,800 |
| 123 | 1.1.6.4.2 | **Double-spindle CNC machine 4** | 45d | 2025-07-09 | 2025-09-10 |  | 4.65d |  |  |  | 1440h | 185,400 |
| 124 | 1.1.6.4.2.1 | Installation | 45d | 2025-07-09 | 2025-09-10 | 120, 83 | 4.65d | 0d |  | Team of Indian workers (4 workers each) [300%] | 1080h | 70,200 |
| 125 | 1.1.6.4.2.2 | Electrical&IT Connections | 5d | 2025-07-09 | 2025-07-16 | 124SS, 122 | 94.65d | 0d |  | Team of Italian workers (4 workers each) [300%] | 120h | 38,400 |
| 126 | 1.1.6.4.2.3 | Final Assembly | 10d | 2025-07-16 | 2025-07-30 | 125 | 94.65d | 30d |  | Team of Italian workers (4 workers each) [300%] | 240h | 76,800 |
| 127 | 1.1.6.5 | **OP.50** | 90d | 2025-07-14 | 2025-11-17 |  | 0.99d |  |  |  | 2880h | 370,800 |
| 128 | 1.1.6.5.1 | **Double-spindle CNC machine 5** | 30d | 2025-07-14 | 2025-08-25 |  | 0.99d |  |  |  | 960h | 123,600 |
| 129 | 1.1.6.5.1.1 | Installation | 30d | 2025-07-14 | 2025-08-25 | 101, 83 | 0.99d | 0d | finish no earlier than 2025-06-26 | Team of Indian workers (4 workers each) [300%] | 720h | 46,800 |
| 130 | 1.1.6.5.1.2 | Electrical&IT Connections | 3.33d | 2025-07-14 | 2025-07-18 | 129SS, 103 | 76d | 0d | finish no earlier than 2025-07-03 | Team of Italian workers (4 workers each) [300%] | 79.92h | 25,574.4 |
| 131 | 1.1.6.5.1.3 | Final Assembly | 6.67d | 2025-07-18 | 2025-07-28 | 130 | 76d | 20d | finish no earlier than 2025-07-17 | Team of Italian workers (4 workers each) [300%] | 160.08h | 51,225.6 |

| ID | WBS | Task | Duration | Start | Finish | Predecessors | Total slack | Free slack | Constraint | Resources | Work | Cost |
| --- | --- | --- | --- | --- | --- | --- | --- | --- | --- | --- | --- | --- |
| 132 | 1.1.6.5.2 | **Double-spindle CNC machine 6** | 30d | 2025-08-25 | 2025-10-06 |  | 0.99d |  |  |  | 960h | 123,600 |
| 133 | 1.1.6.5.2.1 | Installation | 30d | 2025-08-25 | 2025-10-06 | 129, 83 | 0.99d | 0d | finish no earlier than 2025-06-26 | Team of Indian workers (4 workers each) [300%] | 720h | 46,800 |
| 134 | 1.1.6.5.2.2 | Electrical&IT Connections | 3.33d | 2025-08-25 | 2025-08-29 | 133SS, 131 | 55.99d | 0d | finish no earlier than 2025-07-03 | Team of Italian workers (4 workers each) [300%] | 79.92h | 25,574.4 |
| 135 | 1.1.6.5.2.3 | Final Assembly | 6.67d | 2025-08-29 | 2025-09-08 | 134 | 55.99d | 20d | finish no earlier than 2025-07-17 | Team of Italian workers (4 workers each) [300%] | 160.08h | 51,225.6 |
| 136 | 1.1.6.5.3 | **Single-spindle cnc machine 3** | 30d | 2025-10-06 | 2025-11-17 |  | 0.99d |  |  |  | 960h | 123,600 |
| 137 | 1.1.6.5.3.1 | Installation | 30d | 2025-10-06 | 2025-11-17 | 133, 82 | 0.99d | 0d | finish no earlier than 2025-06-26 | Team of Indian workers (4 workers each) [300%] | 720h | 46,800 |
| 138 | 1.1.6.5.3.2 | Electrical&IT Connections | 3.33d | 2025-10-06 | 2025-10-10 | 137SS, 135 | 35.99d | 0d | finish no earlier than 2025-07-03 | Team of Italian workers (4 workers each) [300%] | 79.92h | 25,574.4 |
| 139 | 1.1.6.5.3.3 | Final Assembly | 6.67d | 2025-10-10 | 2025-10-20 | 138 | 35.99d | 20d | finish no earlier than 2025-07-17 | Team of Italian workers (4 workers each) [300%] | 160.08h | 51,225.6 |
| 140 | 1.1.6.6 | **OP.60** | 90d | 2025-01-01 | 2025-05-07 |  | 4.65d |  |  |  | 2880h | 370,800 |
| 141 | 1.1.6.6.1 | **Intermediate washing station** | 90d | 2025-01-01 | 2025-05-07 |  | 4.65d |  |  |  | 2880h | 370,800 |
| 142 | 1.1.6.6.1.1 | Installation | 90d | 2025-01-01 | 2025-05-07 | 91 | 4.65d | 0d |  | Team of Indian workers (4 workers each) [300%] | 2160h | 140,400 |
| 143 | 1.1.6.6.1.2 | Electrical&IT Connections | 10d | 2025-01-01 | 2025-01-15 | 142SS | 184.65d | 0d |  | Team of Italian workers (4 workers each) [300%] | 240h | 76,800 |
| 144 | 1.1.6.6.1.3 | Final Assembly | 20d | 2025-01-15 | 2025-02-12 | 143 | 184.65d | 60d |  | Team of Italian workers (4 workers each) [300%] | 480h | 153,600 |
| 145 | 1.1.6.7 | **OP.70** | 45d | 2025-01-01 | 2025-03-05 |  | 4.65d |  |  |  | 2880h | 441,000 |
| 146 | 1.1.6.7.1 | **Valve guides assembly station** | 45d | 2025-01-01 | 2025-03-05 |  | 4.65d |  |  |  | 2880h | 441,000 |
| 147 | 1.1.6.7.1.1 | Installation | 45d | 2025-01-01 | 2025-03-05 | 93 | 4.65d | 0d |  | Crashing Team Indian workers [300%]; Team of Indian workers (4 workers each) [300%] | 2160h | 210,600 |
| 148 | 1.1.6.7.1.2 | Electrical&IT Connections | 10d | 2025-01-01 | 2025-01-15 | 147SS | 154.65d | 0d |  | Team of Italian workers (4 workers each) [300%] | 240h | 76,800 |
| 149 | 1.1.6.7.1.3 | Final Assembly | 20d | 2025-01-15 | 2025-02-12 | 148 | 154.65d | 18.66d |  | Team of Italian workers (4 workers each) [300%] | 480h | 153,600 |
| 150 | 1.1.6.8 | **OP.80** | 45d | 2025-07-15 | 2025-09-16 |  | 0d |  |  |  | 2880h | 441,000 |
| 151 | 1.1.6.8.1 | **Double-spindle CNC machine 7** | 22.5d | 2025-07-15 | 2025-08-15 |  | 0d |  |  |  | 1440h | 220,500 |
| 152 | 1.1.6.8.1.1 | Installation | 22.5d | 2025-07-15 | 2025-08-15 | 115, 83 | 0d |  |  | Crashing Team Indian workers [300%]; Team of Indian workers (4 workers each) [300%] | 1080h | 105,300 |
| 153 | 1.1.6.8.1.2 | Electrical&IT Connections | 5d | 2025-07-15 | 2025-07-22 | 152SS, 117 | 75d | 0d |  | Team of Italian workers (4 workers each) [300%] | 120h | 38,400 |
| 154 | 1.1.6.8.1.3 | Final Assembly | 10d | 2025-07-22 | 2025-08-05 | 153 | 75d | 7.5d |  | Team of Italian workers (4 workers each) [300%] | 240h | 76,800 |
| 155 | 1.1.6.8.2 | **Double-spindle CNC machine 8** | 22.5d | 2025-08-15 | 2025-09-16 |  | 0d |  |  |  | 1440h | 220,500 |
| 156 | 1.1.6.8.2.1 | Installation | 22.5d | 2025-08-15 | 2025-09-16 | 152, 83 | 0d |  |  | Crashing Team Indian workers [300%]; Team of Indian workers (4 workers each) [300%] | 1080h | 105,300 |
| 157 | 1.1.6.8.2.2 | Electrical&IT Connections | 5d | 2025-08-15 | 2025-08-22 | 156SS, 154 | 67.5d | 0d |  | Team of Italian workers (4 workers each) [300%] | 120h | 38,400 |
| 158 | 1.1.6.8.2.3 | Final Assembly | 10d | 2025-08-22 | 2025-09-05 | 157 | 67.5d | 7.5d |  | Team of Italian workers (4 workers each) [300%] | 240h | 76,800 |

| ID | WBS | Task | Duration | Start | Finish | Predecessors | Total slack | Free slack | Resources | Work | Cost |
| --- | --- | --- | --- | --- | --- | --- | --- | --- | --- | --- | --- |
| 159 | 1.1.6.9 | **OP.90** | 90d | 2025-09-10 | 2026-01-14 |  | 4.65d |  |  | 2880h | 370,800 |
| 160 | 1.1.6.9.1 | **Double-Spindle CNC machine 9** | 30d | 2025-09-10 | 2025-10-22 |  | 4.65d |  |  | 960h | 123,600 |
| 161 | 1.1.6.9.1.1 | Installation | 30d | 2025-09-10 | 2025-10-22 | 124, 83 | 4.65d | 0d | Team of Indian workers (4 workers each) [300%] | 720h | 46,800 |
| 162 | 1.1.6.9.1.2 | Electrical&IT Connections | 3.33d | 2025-09-10 | 2025-09-15 | 161SS, 126 | 64.65d | 0d | Team of Italian workers (4 workers each) [300%] | 79.92h | 25,574.4 |
| 163 | 1.1.6.9.1.3 | Final Assembly | 6.67d | 2025-09-15 | 2025-09-24 | 162 | 64.65d | 20d | Team of Italian workers (4 workers each) [300%] | 160.08h | 51,225.6 |
| 164 | 1.1.6.9.2 | **Double-Spindle CNC machine 10** | 30d | 2025-10-22 | 2025-12-03 |  | 4.65d |  |  | 960h | 123,600 |
| 165 | 1.1.6.9.2.1 | Installation | 30d | 2025-10-22 | 2025-12-03 | 161, 83 | 4.65d | 0d | Team of Indian workers (4 workers each) [300%] | 720h | 46,800 |
| 166 | 1.1.6.9.2.2 | Electrical&IT Connections | 3.33d | 2025-10-22 | 2025-10-27 | 165SS, 163 | 44.65d | 0d | Team of Italian workers (4 workers each) [300%] | 79.92h | 25,574.4 |
| 167 | 1.1.6.9.2.3 | Final Assembly | 6.67d | 2025-10-27 | 2025-11-05 | 166 | 44.65d | 20d | Team of Italian workers (4 workers each) [300%] | 160.08h | 51,225.6 |
| 168 | 1.1.6.9.3 | **Double-Spindle CNC machine 11** | 30d | 2025-12-03 | 2026-01-14 |  | 4.65d |  |  | 960h | 123,600 |
| 169 | 1.1.6.9.3.1 | Installation | 30d | 2025-12-03 | 2026-01-14 | 165, 83 | 4.65d | 0d | Team of Indian workers (4 workers each) [300%] | 720h | 46,800 |
| 170 | 1.1.6.9.3.2 | Electrical&IT Connections | 3.33d | 2025-12-03 | 2025-12-08 | 169SS, 167 | 24.65d | 0d | Team of Italian workers (4 workers each) [300%] | 79.92h | 25,574.4 |
| 171 | 1.1.6.9.3.3 | Final Assembly | 6.67d | 2025-12-08 | 2025-12-17 | 170 | 24.65d |  | Team of Italian workers (4 workers each) [300%] | 160.08h | 51,225.6 |
| 172 | 1.1.6.10 | **OP.100** | 45d | 2025-11-17 | 2026-01-19 |  | 0.99d |  |  | 2880h | 441,000 |
| 173 | 1.1.6.10.1 | **Final washing station** | 45d | 2025-11-17 | 2026-01-19 |  | 0.99d |  |  | 2880h | 441,000 |
| 174 | 1.1.6.10.1.1 | Installation | 45d | 2025-11-17 | 2026-01-19 | 137, 92 | 0.99d | 0d | Team of Indian workers (4 workers each) [300%]; Crashing Team Indian workers [300%] | 2160h | 210,600 |
| 175 | 1.1.6.10.1.2 | Electrical&IT Connections | 10d | 2025-11-17 | 2025-12-01 | 174SS, 139 | 15.99d | 0d | Team of Italian workers (4 workers each) [300%] | 240h | 76,800 |
| 176 | 1.1.6.10.1.3 | Final Assembly | 20d | 2025-12-01 | 2025-12-29 | 175 | 15.99d |  | Team of Italian workers (4 workers each) [300%] | 480h | 153,600 |
| 177 | 1.1.6.11 | **OP.110** | 90d | 2025-09-16 | 2026-01-20 |  | 0d |  |  | 2880h | 370,800 |
| 178 | 1.1.6.11.1 | **Final assembly station** | 90d | 2025-09-16 | 2026-01-20 |  | 0d |  |  | 2880h | 370,800 |
| 179 | 1.1.6.11.1.1 | Installation | 90d | 2025-09-16 | 2026-01-20 | 156, 93 | 0d |  | Team of Indian workers (4 workers each) [300%] | 2160h | 140,400 |
| 180 | 1.1.6.11.1.2 | Electrical&IT Connections | 10d | 2025-09-16 | 2025-09-30 | 179SS, 158 | 60d | 0d | Team of Italian workers (4 workers each) [300%] | 240h | 76,800 |
| 181 | 1.1.6.11.1.3 | Final Assembly | 20d | 2025-09-30 | 2025-10-28 | 180 | 60d |  | Team of Italian workers (4 workers each) [300%] | 480h | 153,600 |
| 182 | 1.1.7 | **FINAL LINE TESTING** | 20d | 2026-01-20 | 2026-02-17 |  | 0d |  |  | 320h | 73,600 |
| 183 | 1.1.7.1 | Testing | 20d | 2026-01-20 | 2026-02-17 | 179, 174, 169, 156, 147, 142, 137, 124, 115, 106, 101, 171, 176, 181, 85, 86, 87, 88, 89, 90 | 0d |  | Italian Project Engineer [200%]; Team of Italian workers (4 workers each) | 320h | 73,600 |

| ID | WBS | Task | Duration | Start | Finish | Predecessors | Total slack | Free slack | Resources | Work | Cost |
| --- | --- | --- | --- | --- | --- | --- | --- | --- | --- | --- | --- |
| 184 | 1.2 | **Project2** | 382.75d | 2025-01-15 | 2026-07-06 |  | 0d |  |  | 6356h | 207,682 |
| 185 | 1.2.1 | **ERP Implementation** | 381.75d | 2025-01-15 | 2026-07-03 |  | 0d |  |  | 6332h | 205,682 |
| 186 | 1.2.1.1 | **Prepare** | 40d | 2025-01-15 | 2025-03-12 |  | 84.25d |  |  | 704h | 47,680 |
| 187 | 1.2.1.1.1 | Plan the meeting and revise requirements | 8d | 2025-01-15 | 2025-01-27 | 79FS+1d | 84.25d | 0d | ERP Expert IT; Project Director | 128h | 6,464 |
| 188 | 1.2.1.1.2 | **Develop projet plan** | 8d | 2025-01-27 | 2025-02-06 |  | 84.25d |  |  | 128h | 6,464 |
| 189 | 1.2.1.1.2.1 | Develop Project Charter | 2d | 2025-01-27 | 2025-01-29 | 187 | 84.25d | 0d | Project Director; ERP Expert IT | 32h | 1,616 |
| 190 | 1.2.1.1.2.2 | Define project and quality management processes | 2d | 2025-01-29 | 2025-01-31 | 189 | 84.25d | 0d | Project Director; ERP Expert IT | 32h | 1,616 |
| 191 | 1.2.1.1.2.3 | Create Master Plan | 2d | 2025-01-31 | 2025-02-04 | 190 | 84.25d | 0d | Project Director; ERP Expert IT | 32h | 1,616 |
| 192 | 1.2.1.1.2.4 | Craft detailed work plan | 2d | 2025-02-04 | 2025-02-06 | 191 | 84.25d | 0d | Project Director; ERP Expert IT | 32h | 1,616 |
| 193 | 1.2.1.1.3 | Validate and prioritize requirements | 8d | 2025-02-06 | 2025-02-18 | 192 | 84.25d | 0d | ERP Expert IT; Project Director | 128h | 6,464 |
| 194 | 1.2.1.1.4 | **Establish governance and communicating strategy** | 8d | 2025-02-18 | 2025-02-28 |  | 84.25d |  |  | 192h | 16,000 |
| 195 | 1.2.1.1.4.1 | Establish organizational structure | 3d | 2025-02-18 | 2025-02-21 | 193 | 84.25d | 0d | CEO IN; CEO IT; Project Director | 72h | 6,000 |
| 196 | 1.2.1.1.4.2 | Devise project tool strategy | 3d | 2025-02-21 | 2025-02-26 | 195 | 84.25d | 0d | CEO IN; CEO IT; Project Director | 72h | 6,000 |
| 197 | 1.2.1.1.4.3 | Assign resources to tasks | 2d | 2025-02-26 | 2025-02-28 | 196 | 84.25d | 0d | CEO IN; CEO IT; Project Director | 48h | 4,000 |
| 198 | 1.2.1.1.5 | Hire resources | 8d | 2025-02-28 | 2025-03-12 | 197 | 84.25d | 0d | CEO IN; CEO IT | 128h | 12,288 |
| 199 | 1.2.1.2 | **Explore** | 60d | 2025-03-12 | 2025-06-04 |  | 84.25d |  |  | 1360h | 48,080 |
| 200 | 1.2.1.2.1 | Perform AS IS analysis | 10d | 2025-03-12 | 2025-03-26 | 198 | 84.25d | 0d | Business Analyst IT | 80h | 3,040 |
| 201 | 1.2.1.2.2 | Perform FIT GAP analysis | 10d | 2025-03-26 | 2025-04-09 | 200 | 84.25d | 0d | Business Analyst IT; ERP Expert IT; Functional Manager IN; Functional Manager IT; Functional Professional IN; Functional Professional IT | 480h | 16,040 |
| 202 | 1.2.1.2.3 | Perform TO BE analysis | 10d | 2025-04-09 | 2025-04-23 | 201 | 84.25d | 0d | Business Analyst IT | 80h | 3,040 |
| 203 | 1.2.1.2.4 | Develop functional specification and realization plan | 10d | 2025-04-23 | 2025-05-07 | 202 | 84.25d | 0d | Business Analyst IT; ERP Expert IT | 160h | 6,480 |
| 204 | 1.2.1.2.5 | Develop security, privacy and controls approach | 10d | 2025-05-07 | 2025-05-21 | 203 | 84.25d | 0d | ERP Expert IT | 80h | 3,440 |
| 205 | 1.2.1.2.6 | Develop Business Process Blueprints | 10d | 2025-05-21 | 2025-06-04 | 204 | 84.25d | 0d | Business Analyst IT; ERP Expert IT; Functional Manager IN; Functional Manager IT; Functional Professional IN; Functional Professional IT | 480h | 16,040 |
| 206 | 1.2.1.3 | **Build** | 100d | 2025-06-04 | 2025-10-22 |  | 84.25d |  |  | 2240h | 56,880 |
| 207 | 1.2.1.3.1 | Develop technical specifications | 20d | 2025-06-04 | 2025-07-02 | 205 | 84.25d | 0d | ERP Expert IT; ERP Professional IN; Functional Professional IN; Functional Professional IT | 640h | 16,320 |
| 208 | 1.2.1.3.2 | Develop configuration and code | 20d | 2025-07-02 | 2025-07-30 | 207 | 84.25d | 0d | ERP Expert IT; ERP Professional IN | 320h | 8,080 |
| 209 | 1.2.1.3.3 | Perform unit test | 20d | 2025-07-30 | 2025-08-27 | 208 | 84.25d | 0d | ERP Expert IT; ERP Professional IN | 320h | 8,080 |
| 210 | 1.2.1.3.4 | Develop learning documentation | 20d | 2025-08-27 | 2025-09-24 | 209 | 84.25d | 0d | ERP Expert IT; ERP Professional IN | 320h | 8,080 |
| 211 | 1.2.1.3.5 | Develop Go/No Go criteria and deployment plan | 20d | 2025-09-24 | 2025-10-22 | 210 | 84.25d |  | ERP Expert IT; ERP Professional IN; Functional Professional IN; Functional Professional IT | 640h | 16,320 |

| ID | WBS | Task | Duration | Start | Finish | Predecessors | Total slack | Free slack | Resources | Work | Cost |
| --- | --- | --- | --- | --- | --- | --- | --- | --- | --- | --- | --- |
| 212 | 1.2.1.4 | **Test** | 33d | 2026-02-17 | 2026-04-03 |  | 0d |  |  | 648h | 19,224 |
| 213 | 1.2.1.4.1 | Conduct integration test | 6d | 2026-02-17 | 2026-02-25 | 211, 183 | 0d |  | ERP Professional IN; ERP Expert IT | 96h | 2,424 |
| 214 | 1.2.1.4.2 | Conduct mock data conversion | 6d | 2026-02-25 | 2026-03-05 | 213 | 0d |  | ERP Professional IN; ERP Expert IT | 96h | 2,424 |
| 215 | 1.2.1.4.3 | Develop a transition plan | 3d | 2026-03-05 | 2026-03-10 | 214 | 0d |  | Business Analyst IT; ERP Expert IT; ERP Professional IN; Functional Manager IN; Functional Manager IT; Functional Professional IN; Functional Professional IT | 168h | 4,992 |
| 216 | 1.2.1.4.4 | Prepare for user acceptance test | 12d | 2026-03-10 | 2026-03-26 | 215 | 0d |  | Business Analyst IT | 96h | 3,648 |
| 217 | 1.2.1.4.5 | Conduct acceptance test | 6d | 2026-03-26 | 2026-04-03 | 216 | 0d |  | Functional Professional IT; Functional Manager IN; Functional Manager IT; Functional Professional IN | 192h | 5,736 |
| 218 | 1.2.1.5 | **Deploy** | 24.5d | 2026-04-03 | 2026-05-08 |  | 0d |  |  | 420h | 11,178 |
| 219 | 1.2.1.5.1 | Meeting to start project 3 | 4h | 2026-04-03 | 2026-04-06 | 217 | 0d |  | Senior guiding team; Sponsor; CEO IT | 12h | 1,906 |
| 220 | 1.2.1.5.2 | Deploy learning to end-users | 10d | 2026-04-06 | 2026-04-20 | 219 | 0d |  | Human Resources IN | 80h | 600 |
| 221 | 1.2.1.5.3 | Conduct deployment Go/No Go decision set | 5d | 2026-04-20 | 2026-04-27 | 220 | 0d |  | Functional Professional IT; Functional Professional IN | 80h | 2,060 |
| 222 | 1.2.1.5.4 | Execute production deployment | 4d | 2026-04-27 | 2026-05-01 | 221 | 0d |  | Information Technology IN; Business Analyst IT; ERP Expert IT; ERP Professional IN | 128h | 3,072 |
| 223 | 1.2.1.5.5 | Execute final data migration | 5d | 2026-05-01 | 2026-05-08 | 222 | 0d |  | Business Analyst IT; ERP Expert IT; ERP Professional IN | 120h | 3,540 |
| 224 | 1.2.1.6 | **Run** | 40d | 2026-05-08 | 2026-07-03 |  | 0d |  |  | 960h | 22,640 |
| 225 | 1.2.1.6.1 | Develop post implementation and evaluation reports | 10d | 2026-05-08 | 2026-05-22 | 223 | 0d |  | Business Analyst IT; Information Technology IN | 160h | 3,640 |
| 226 | 1.2.1.6.2 | Conduct service delivery transition | 10d | 2026-05-22 | 2026-06-05 | 225 | 0d |  | Business Analyst IT; ERP Expert IT; ERP Professional IN; Information Technology IN | 320h | 7,680 |
| 227 | 1.2.1.6.3 | Track value realization | 10d | 2026-06-05 | 2026-06-19 | 226 | 0d |  | Business Analyst IT; Information Technology IN | 160h | 3,640 |
| 228 | 1.2.1.6.4 | Close project | 10d | 2026-06-19 | 2026-07-03 | 227 | 0d |  | Business Analyst IT; ERP Expert IT; ERP Professional IN; Information Technology IN | 320h | 7,680 |
| 229 | 1.2.2 | Meeting with Stakeholders for project 2 closure | 1d | 2026-07-03 | 2026-07-06 | 228 | 0d |  | CEO IN; CEO IT; Project Director | 24h | 2,000 |
| 230 | 1.3 | **Project3** | 374.25d | 2025-01-15 | 2026-06-23 |  | 9d |  |  | 1116h | 337,752.28 |
| 231 | 1.3.1 | **Initiation** | 6d | 2025-01-15 | 2025-01-23 |  | 293.25d |  |  | 52h | 7,354.68 |
| 232 | 1.3.1.1 | Conduct SWOT analysis | 2d | 2025-01-15 | 2025-01-17 | 80 | 293.25d | 0d | Business analyst | 16h | 2,255.52 |
| 233 | 1.3.1.2 | Develop future scenarios | 2d | 2025-01-17 | 2025-01-21 | 232 | 293.25d | 0d | Business analyst | 16h | 2,255.52 |
| 234 | 1.3.1.3 | Communicate current threat to employees | 1d | 2025-01-21 | 2025-01-22 | 233 | 293.25d | 0d | Business analyst | 8h | 1,127.76 |
| 235 | 1.3.1.4 | Discussion with industry expert and stakeholders | 1d | 2025-01-22 | 2025-01-23 | 234 | 293.25d | 0d | Business analyst [50%]; CEO IT | 12h | 1,715.88 |

| ID | WBS | Task | Duration | Start | Finish | Predecessors | Total slack | Free slack | Resources | Work | Cost |
| --- | --- | --- | --- | --- | --- | --- | --- | --- | --- | --- | --- |
| 236 | 1.3.2 | **Building Guiding coalition** | 8d | 2025-01-23 | 2025-02-04 |  | 293.25d |  |  | 96h | 19,160 |
| 237 | 1.3.2.1 | Choose the Sponsor | 2d | 2025-01-23 | 2025-01-27 | 235 | 293.25d | 0d | CEO IT | 16h | 2,304 |
| 238 | 1.3.2.2 | Choose the Senior Guiding Team | 2d | 2025-01-27 | 2025-01-29 | 237 | 293.25d | 0d | Sponsor | 16h | 880 |
| 239 | 1.3.2.3 | Choose the Field Guiding Team | 2d | 2025-01-29 | 2025-01-31 | 238 | 293.25d | 0d | Senior guiding team; Sponsor | 32h | 5,320 |
| 240 | 1.3.2.4 | Choose the Change Team | 2d | 2025-01-31 | 2025-02-04 | 239 | 293.25d | 0d | Field guiding team; Senior guiding team | 32h | 10,656 |
| 241 | 1.3.3 | **New strategic Vision Creation** | 12d | 2025-02-04 | 2025-02-20 |  | 293.25d |  |  | 192h | 65,179.2 |
| 242 | 1.3.3.1 | Align vision with core values | 2d | 2025-02-04 | 2025-02-06 | 240 | 293.25d | 0d | Change team; Senior guiding team | 32h | 10,123.2 |
| 243 | 1.3.3.2 | Find and incorporate employees input | 3d | 2025-02-06 | 2025-02-11 | 242 | 293.25d | 0d | Change team; Field guiding team | 48h | 17,848.8 |
| 244 | 1.3.3.3 | **Ensure clarity and communicability** | 1d | 2025-02-11 | 2025-02-12 |  | 293.25d |  |  | 16h | 5,949.6 |
| 245 | 1.3.3.3.1 | Verify that the vision is easily understandable for everyone in the organization | 1d | 2025-02-11 | 2025-02-12 | 243 | 293.25d | 0d | Change team; Field guiding team | 16h | 5,949.6 |
| 246 | 1.3.3.4 | **Ties Vision to data and evidence** | 5d | 2025-02-12 | 2025-02-19 |  | 293.25d |  |  | 80h | 25,308 |
| 247 | 1.3.3.4.1 | Analyze forecast, market research and business trends to give evidence to the vision | 5d | 2025-02-12 | 2025-02-19 | 245 | 293.25d | 0d | Change team; Senior guiding team | 80h | 25,308 |
| 248 | 1.3.3.5 | **Strive for Conciseness** | 1d | 2025-02-19 | 2025-02-20 |  | 293.25d |  |  | 16h | 5,949.6 |
| 249 | 1.3.3.5.1 | Make sure the vision is coincident and can be explained in 5 minutes | 1d | 2025-02-19 | 2025-02-20 | 247 | 293.25d | 0d | Change team; Field guiding team | 16h | 5,949.6 |
| 250 | 1.3.4 | **Communicating Vision change to the employees** | 8d | 2025-02-20 | 2025-03-04 |  | 293.25d |  |  | 64h | 23,532 |
| 251 | 1.3.4.1 | **Develop communication plan** | 3d | 2025-02-20 | 2025-02-25 |  | 293.25d |  |  | 24h | 9,324 |
| 252 | 1.3.4.1.1 | Choose information to communicate | 2d | 2025-02-20 | 2025-02-24 | 249 | 293.25d | 0d | Field guiding team | 16h | 6,216 |
| 253 | 1.3.4.1.2 | Choose communication channels | 1d | 2025-02-24 | 2025-02-25 | 252 | 293.25d | 0d | Field guiding team | 8h | 3,108 |
| 254 | 1.3.4.2 | Applies the communication process | 5d | 2025-02-25 | 2025-03-04 | 253 | 293.25d | 284.25d | Change team | 40h | 14,208 |
| 255 | 1.3.5 | **Removing barriers phase** | 14d | 2026-04-06 | 2026-04-24 |  | 9d |  |  | 136h | 42,712.8 |
| 256 | 1.3.5.1 | **Identify barriers to change** | 6d | 2026-04-06 | 2026-04-14 |  | 9d |  |  | 48h | 13,320 |
| 257 | 1.3.5.1.1 | Identify inadequate process | 2d | 2026-04-06 | 2026-04-08 | 254, 219 | 9d | 0d | Senior guiding team | 16h | 4,440 |
| 258 | 1.3.5.1.2 | Identify employees resistance | 1d | 2026-04-08 | 2026-04-09 | 257 | 9d | 0d | Senior guiding team | 8h | 2,220 |
| 259 | 1.3.5.1.3 | Identify misaligned organizational policies and structures | 2d | 2026-04-09 | 2026-04-13 | 258 | 9d | 0d | Senior guiding team | 16h | 4,440 |
| 260 | 1.3.5.1.4 | Identify disempowering management practices | 1d | 2026-04-13 | 2026-04-14 | 259 | 9d | 0d | Senior guiding team | 8h | 2,220 |
| 261 | 1.3.5.2 | Develop an action plan to remove barriers | 3d | 2026-04-14 | 2026-04-17 | 260 | 9d | 0d | Senior guiding team; Change team | 48h | 15,184.8 |
| 262 | 1.3.5.3 | Implement Changes | 5d | 2026-04-17 | 2026-04-24 | 261 | 9d | 0d | Change team | 40h | 14,208 |

| ID | WBS | Task | Duration | Start | Finish | Predecessors | Total slack | Free slack | Resources | Work | Cost |
| --- | --- | --- | --- | --- | --- | --- | --- | --- | --- | --- | --- |
| 263 | 1.3.6 | **Chasing short win** | 17d | 2026-04-24 | 2026-05-19 |  | 9d |  |  | 176h | 55,944 |
| 264 | 1.3.6.1 | **Identify short-term win opportunities** | 4d | 2026-04-24 | 2026-04-30 |  | 9d |  |  | 32h | 8,880 |
| 265 | 1.3.6.1.1 | Identify all the possible short term win opportunities | 3d | 2026-04-24 | 2026-04-29 | 262 | 9d | 0d | Senior guiding team | 24h | 6,660 |
| 266 | 1.3.6.1.2 | Identify all the pros and cons for each project | 1d | 2026-04-29 | 2026-04-30 | 265 | 9d | 0d | Senior guiding team | 8h | 2,220 |
| 267 | 1.3.6.2 | **Pilot project phase** | 13d | 2026-04-30 | 2026-05-19 |  | 9d |  |  | 144h | 47,064 |
| 268 | 1.3.6.2.1 | Select the pilot project to achive the short term win | 2d | 2026-04-30 | 2026-05-04 | 266 | 9d | 0d | Senior guiding team | 16h | 4,440 |
| 269 | 1.3.6.2.2 | Break down project into components | 2d | 2026-05-04 | 2026-05-06 | 268 | 9d | 0d | Change team; Senior guiding team | 32h | 10,123.2 |
| 270 | 1.3.6.2.3 | Define short term goals for each components | 3d | 2026-05-06 | 2026-05-11 | 269 | 9d | 0d | Change team; Senior guiding team | 48h | 15,184.8 |
| 271 | 1.3.6.2.4 | Implement the project | 5d | 2026-05-11 | 2026-05-18 | 270 | 9d | 0d | Change team | 40h | 14,208 |
| 272 | 1.3.6.2.5 | Celebrate short term win | 1d | 2026-05-18 | 2026-05-19 | 271 | 9d | 0d | Field guiding team | 8h | 3,108 |
| 273 | 1.3.7 | **Scale up phase** | 5d | 2026-05-19 | 2026-05-26 |  | 9d |  |  | 80h | 25,840.8 |
| 274 | 1.3.7.1 | Evaluate what worked and what needs improvments | 2d | 2026-05-19 | 2026-05-21 | 272 | 9d | 0d | Field guiding team; Senior guiding team | 32h | 10,656 |
| 275 | 1.3.7.2 | Identify and remove unnecessary processes and interdependencies | 3d | 2026-05-21 | 2026-05-26 | 274 | 9d | 0d | Change team; Senior guiding team | 48h | 15,184.8 |
| 276 | 1.3.8 | **Institute change phase** | 19d | 2026-05-26 | 2026-06-22 |  | 9d |  |  | 296h | 94,216.8 |
| 277 | 1.3.8.1 | Identify and incorporate norms and values that reinforce the change | 2d | 2026-05-26 | 2026-05-28 | 275 | 9d | 0d | Change team; Senior guiding team | 32h | 10,123.2 |
| 278 | 1.3.8.2 | communicate these values to HR and the hiring team | 1d | 2026-05-28 | 2026-05-29 | 277 | 9d | 0d | Field guiding team | 8h | 3,108 |
| 279 | 1.3.8.3 | Create new training and development programs to help employees develop skills and competencies relevant to the new changes | 10d | 2026-05-29 | 2026-06-12 | 278 | 9d | 0d | Change team; Senior guiding team | 160h | 50,616 |
| 280 | 1.3.8.4 | Detect process that do not align with the new culture | 3d | 2026-06-12 | 2026-06-17 | 279 | 9d | 0d | Change team; Senior guiding team | 48h | 15,184.8 |
| 281 | 1.3.8.5 | Eliminate or renew each process | 3d | 2026-06-17 | 2026-06-22 | 280 | 9d | 0d | Change team; Senior guiding team | 48h | 15,184.8 |
| 282 | 1.3.9 | Meeting with stakeholders for project 3 closure | 1d | 2026-06-22 | 2026-06-23 | 281 | 9d |  | CEO IT; Sponsor; Senior guiding team | 24h | 3,812 |
| 283 | 1.4 | **FINAL MEETING** | 1d | 2026-07-06 | 2026-07-07 |  | 0d |  |  | 16h | 1,536 |
| 284 | 1.4.1 | Final meeting | 1d | 2026-07-06 | 2026-07-07 | 183, 229, 282, 14 | 0d |  | CEO IN; CEO IT | 16h | 1,536 |
